# 关口电能计量装置台账管理项目工作计划

Schedule from MS Project, 2010-05-05 to 2010-08-31.
番茄花园

## Calendars

- 标准: Mon-Fri 08:00-12:00, 13:00-17:00; Sat-Sun off. Exceptions (off unless hours are given): 2010-05-15 to 2010-05-16 08:00-12:00, 13:00-17:00, 2010-05-29 08:00-12:00, 13:00-17:00, 2010-06-12 to 2010-06-13 08:00-12:00, 13:00-17:00, 2010-06-19 to 2010-06-20 08:00-12:00, 13:00-17:00, 2010-06-26 to 2010-06-27 08:00-12:00, 13:00-17:00, 2010-07-04 08:00-12:00, 13:00-17:00, 2010-07-10 to 2010-07-11 08:00-12:00, 13:00-17:00, 2010-07-17 08:00-12:00, 13:00-17:00, 2010-07-24 to 2010-07-25 08:00-12:00, 13:00-17:00, 2010-07-31 to 2010-08-01 08:00-12:00, 13:00-17:00.

## Schedule

| ID | WBS | Task | Duration | Start | Finish | Total slack | Constraint |
| --- | --- | --- | --- | --- | --- | --- | --- |
| 1 | 1 | **需求设计阶段** | 19d? | 2010-05-10 | 2010-05-31 | 80d |  |
| 2 | 1.1 | **需求分析** | 9d? | 2010-05-12 | 2010-05-20 | 88d |  |
| 3 | 1.1.1 | 需求分析报告（台帐管理） | 6d? | 2010-05-12 | 2010-05-17 | 91d | finish no earlier than 2010-05-17 |
| 4 | 1.1.2 | 开发计划 | 9d? | 2010-05-12 | 2010-05-20 | 88d | finish no earlier than 2010-05-20 |
| 5 | 1.2 | **设计（台帐管理）** | 15d? | 2010-05-10 | 2010-05-26 | 84d |  |
| 6 | 1.2.1 | 台帐管理概要设计 | 8d? | 2010-05-17 | 2010-05-26 | 84d | finish no earlier than 2010-05-26 |
| 7 | 1.2.2 | 权限管理概要设计 | 11d? | 2010-05-10 | 2010-05-20 | 88d | finish no earlier than 2010-05-20 |
| 8 | 1.2.3 | 数据库设计 | 8d? | 2010-05-17 | 2010-05-26 | 84d | finish no earlier than 2010-05-26 |
| 9 | 1.3 | **技术研究** | 19d? | 2010-05-10 | 2010-05-31 | 80d |  |
| 10 | 1.3.1 | 技术架构确定 | 6d? | 2010-05-10 | 2010-05-15 | 93d | start no earlier than 2010-05-10 |
| 11 | 1.3.2 | EXCEL导入导出技术封装 | 9d? | 2010-05-10 | 2010-05-18 | 90d | start no earlier than 2010-05-10 |
| 12 | 1.3.3 | GIS技术封装 | 11d? | 2010-05-10 | 2010-05-20 | 88d | start no earlier than 2010-05-10 |
| 13 | 1.3.4 | EXT相关技术封装 | 5d? | 2010-05-16 | 2010-05-20 | 88d | finish no earlier than 2010-05-20 |
| 14 | 1.3.5 | 菜单、权限模块构建 | 10d? | 2010-05-17 | 2010-05-28 | 82d | finish no earlier than 2010-05-28 |
| 15 | 1.3.6 | 相关技术研究报告 | 6d? | 2010-05-25 | 2010-05-31 | 80d | finish no earlier than 2010-05-31 |
| 16 | 2 | **系统开发1（台帐管理）** | 28d? | 2010-06-01 | 2010-06-30 | 52d |  |
| 17 | 2.1 | **台帐管理开发** | 28d? | 2010-06-01 | 2010-06-30 | 52d |  |
| 18 | 2.1.1 | 电能表数据导入 | 5d? | 2010-06-01 | 2010-06-07 | 75d | finish no earlier than 2010-06-07 |
| 19 | 2.1.2 | 互感器书库导入 | 3d? | 2010-06-07 | 2010-06-09 | 73d | finish no earlier than 2010-06-09 |
| 20 | 2.1.3 | 计量点台帐 | 4d? | 2010-06-01 | 2010-06-06 | 76d | finish no earlier than 2010-06-06 |
| 21 | 2.1.4 | 计量点查询 | 2d? | 2010-06-07 | 2010-06-08 | 74d | finish no earlier than 2010-06-08 |
| 22 | 2.1.5 | 计量点历史数据查询 | 2d? | 2010-06-09 | 2010-06-10 | 72d | finish no earlier than 2010-06-10 |
| 23 | 2.1.6 | 关口计量点管理 | 2d? | 2010-06-11 | 2010-06-12 | 70d | start no earlier than 2010-06-11 |
| 24 | 2.1.7 | 计量点新增审批 | 3d? | 2010-06-10 | 2010-06-12 | 70d | start no earlier than 2010-06-10 |
| 25 | 2.1.8 | 计量点删除审批 | 2d? | 2010-06-13 | 2010-06-14 | 68d | finish no earlier than 2010-06-14 |
| 26 | 2.1.9 | 电能表管理 | 2d? | 2010-06-13 | 2010-06-14 | 68d | finish no earlier than 2010-06-14 |
| 27 | 2.1.10 | 电流二次回路维护 | 2d? | 2010-06-15 | 2010-06-16 | 66d | finish no earlier than 2010-06-16 |
| 28 | 2.1.11 | 电压二次回路维护 | 2d? | 2010-06-17 | 2010-06-18 | 64d | finish no earlier than 2010-06-18 |
| 29 | 2.1.12 | 失压计时仪管理 | 2d? | 2010-06-19 | 2010-06-20 | 62d | finish no earlier than 2010-06-20 |
| 30 | 2.1.13 | GPS时钟管理 | 2d? | 2010-06-21 | 2010-06-22 | 60d | finish no earlier than 2010-06-22 |
| 31 | 2.1.14 | 电流互感器管理 | 2d? | 2010-06-23 | 2010-06-24 | 58d | finish no earlier than 2010-06-24 |
| 32 | 2.1.15 | 电压互感器管理 | 2d? | 2010-06-25 | 2010-06-26 | 56d | finish no earlier than 2010-06-26 |
| 33 | 2.1.16 | 计量点构成维护 | 2d? | 2010-06-27 | 2010-06-28 | 54d | finish no earlier than 2010-06-28 |
| 34 | 2.1.17 | 备用设备管理 | 2d? | 2010-06-29 | 2010-06-30 | 52d | start no earlier than 2010-06-29 |

| ID | WBS | Task | Duration | Start | Finish | Total slack | Constraint |
| --- | --- | --- | --- | --- | --- | --- | --- |
| 35 | 2.2 | **设计** | 23d? | 2010-06-01 | 2010-06-25 | 57d |  |
| 36 | 2.2.1 | 设备更换管理概要设计 | 9d? | 2010-06-01 | 2010-06-11 | 71d | finish no earlier than 2010-06-11 |
| 37 | 2.2.2 | 计划管理概要设计 | 23d? | 2010-06-01 | 2010-06-25 | 57d | finish no earlier than 2010-06-25 |
| 38 | 2.2.3 | 检定管理概要设计 | 14d? | 2010-06-12 | 2010-06-25 | 57d | finish no earlier than 2010-06-25 |
| 39 | 2.3 | **设备更换管理开发** | 16d? | 2010-06-15 | 2010-06-30 | 52d |  |
| 40 | 2.3.1 | 设备更换信息导入 | 3d? | 2010-06-15 | 2010-06-17 | 65d | finish no earlier than 2010-06-17 |
| 41 | 2.3.2 | 计量点更换记录查询 | 3d? | 2010-06-18 | 2010-06-20 | 62d | finish no earlier than 2010-06-20 |
| 42 | 2.3.3 | 电能表更换 | 2d? | 2010-06-21 | 2010-06-22 | 60d | finish no earlier than 2010-06-22 |
| 43 | 2.3.4 | 失压计时仪更换 | 2d? | 2010-06-23 | 2010-06-24 | 58d | finish no earlier than 2010-06-24 |
| 44 | 2.3.5 | GPS时钟更换 | 2d? | 2010-06-25 | 2010-06-26 | 56d | finish no earlier than 2010-06-26 |
| 45 | 2.3.6 | 电流互感器更换 | 2d? | 2010-06-27 | 2010-06-28 | 54d | finish no earlier than 2010-06-28 |
| 46 | 2.3.7 | 电压互感器更换 | 2d? | 2010-06-29 | 2010-06-30 | 52d | finish no earlier than 2010-06-30 |
| 47 | 3 | **系统开发2（计划管理）** | 29d? | 2010-07-01 | 2010-07-31 | 23d |  |
| 48 | 3.1 | **计划管理** | 25d? | 2010-07-01 | 2010-07-27 | 27d |  |
| 49 | 3.1.1 | 年度检定计划制定 | 6d? | 2010-07-01 | 2010-07-07 | 46d | finish no earlier than 2010-07-07 |
| 50 | 3.1.2 | 年度现场检验计划 | 5d? | 2010-07-08 | 2010-07-12 | 41d | finish no earlier than 2010-07-12 |
| 51 | 3.1.3 | 年度检定计划审批 | 3d? | 2010-07-01 | 2010-07-04 | 49d | start no earlier than 2010-07-01 |
| 52 | 3.1.4 | 年度现场检验计划审批 | 2d? | 2010-07-05 | 2010-07-06 | 47d | finish no earlier than 2010-07-06 |
| 53 | 3.1.5 | 临时计划制定 | 6d? | 2010-07-13 | 2010-07-19 | 35d | start no earlier than 2010-07-13 |
| 54 | 3.1.6 | 月度计划调整审批 | 2d? | 2010-07-07 | 2010-07-08 | 45d | finish no earlier than 2010-07-08 |
| 55 | 3.1.7 | 月度计划调整 | 8d? | 2010-07-20 | 2010-07-27 | 27d | finish no earlier than 2010-07-27 |
| 56 | 3.1.8 | 临时计划审批 | 2d? | 2010-07-09 | 2010-07-10 | 43d | finish no earlier than 2010-07-10 |
| 57 | 3.1.9 | 计划查询 | 2d? | 2010-07-11 | 2010-07-12 | 41d | finish no earlier than 2010-07-12 |
| 58 | 3.1.10 | 审批情况查询 | 4d? | 2010-07-13 | 2010-07-16 | 37d | finish no earlier than 2010-07-16 |

| ID | WBS | Task | Duration | Start | Finish | Total slack | Constraint |
| --- | --- | --- | --- | --- | --- | --- | --- |
| 59 | 3.2 | **检定管理** | 14d? | 2010-07-17 | 2010-07-31 | 23d |  |
| 60 | 3.2.1 | 检定数据导入 | 7d | 2010-07-17 | 2010-07-24 | 30d | start no earlier than 2010-07-17 |
| 61 | 3.2.2 | 工作情况填报 | 7d? | 2010-07-25 | 2010-07-31 | 23d | finish no earlier than 2010-07-31 |
| 62 | 3.2.3 | 检定情况查询 | 4d? | 2010-07-28 | 2010-07-31 | 23d | start no earlier than 2010-07-28 |
| 63 | 3.3 | **设计** | 18d? | 2010-07-01 | 2010-07-20 | 34d |  |
| 64 | 3.3.1 | 综合查询概要设计 | 18d? | 2010-07-01 | 2010-07-20 | 34d | finish no earlier than 2010-07-20 |
| 65 | 3.3.2 | 基础数据维护概要设计 | 11d? | 2010-07-01 | 2010-07-12 | 41d | finish no earlier than 2010-07-12 |
| 66 | 3.3.3 | 系统管理概要设计 | 7d? | 2010-07-13 | 2010-07-20 | 34d | finish no earlier than 2010-07-20 |
| 67 | 4 | **系统开发3（查询与系统管理）** | 102d? | 2010-05-05 | 2010-08-31 | 0d |  |
| 68 | 4.1 | **综合查询** | 16d? | 2010-08-01 | 2010-08-20 | 7d |  |
| 69 | 4.1.1 | 查询 | 16d? | 2010-08-01 | 2010-08-20 | 7d | finish no earlier than 2010-08-20 |
| 70 | 4.1.2 | 报表 | 16d? | 2010-08-01 | 2010-08-20 | 7d | finish no earlier than 2010-08-20 |
| 71 | 4.2 | **基础数据维护** | 8d? | 2010-08-01 | 2010-08-10 | 15d |  |
| 72 | 4.2.1 | 基础信息维护 | 8d? | 2010-08-01 | 2010-08-10 | 15d | finish no earlier than 2010-08-10 |
| 73 | 4.3 | **系统管理** | 102d? | 2010-05-05 | 2010-08-31 | 0d |  |
| 74 | 4.3.1 | 数据备份等 | 8d? | 2010-08-20 | 2010-08-31 | 0d | finish no earlier than 2010-08-31 |
